# Проект1_task4

How a schedule from MS Project changed from version to version. A marks actual dates.

## Version 1 (saved 2025-04-08, file Lab5_3.mpp)

Note of the change: Добавлен курс ЭПИ

| ID | WBS | Task | Duration | Start | Finish | Predecessors | Total float |
| --- | --- | --- | --- | --- | --- | --- | --- |
| 1 |  | Начало проекта | 0d | 2025-03-03 | 2025-03-03 |  | 0d |
| 2 | 2 | **Проектирование** | 15d | 2025-03-03 | 2025-03-24 |  | 0d |
| 3 |  | Анализ и построение структуры базы объектов | 2w | 2025-03-03 | 2025-03-17 | 1 | 25.88d |
| 4 |  | Анализ и проектирование ядра | 3w | 2025-03-03 | 2025-03-24 | 1 | 0d |
| 5 | 3 | **Разработка** | 95d | 2025-03-03 | 2025-07-22 |  | 0d |
| 6 | 3.1 | **Дизайн** | 5w | 2025-03-03 | 2025-04-07 |  |  |
| 7 | 3.1.1 | **Разработка дизайна интерфейса** | 25d | 2025-03-03 | 2025-04-07 |  | 55d |
| 8 |  | Разработка 2D графических элементов | 3w | 2025-03-03 | 2025-03-24 | 1 | 55d |
| 9 |  | Разработка 3D графических элементов | 2w | 2025-03-03 | 2025-03-17 | 8SS | 55d |
| 10 |  | Создание заставки | 3w | 2025-03-17 | 2025-04-07 | 9 | 55d |
| 11 |  | Разработка структуры сайта | 1d | 2025-03-03 | 2025-03-03 | 1 | 74d |
| 12 |  | Разработка дизайна сайта | 1w | 2025-03-04 | 2025-03-11 | 11 | 74d |
| 13 | 3.2 | **Кодирование** | 85d | 2025-03-17 | 2025-07-22 |  | 0d |
| 14 |  | Программирование интерфейса | 3w | 2025-04-28 | 2025-05-23 | 7, 16 | 40d |
| 15 |  | Программирование средств обработки базы объектов | 3w | 2025-03-17 | 2025-04-07 | 3 | 25.88d |
| 16 |  | Создание модели ядра | 5w | 2025-03-24 | 2025-04-28 | 4 | 0d |
| 17 |  | Создание рабочей версии ядра | 10w | 2025-05-07 | 2025-07-22 | 23 | 0d |
| 18 | 3.3 | **Наполнение** | 79d | 2025-03-11 | 2025-07-08 |  | 30d |
| 19 |  | Наполнение базы объектов | 12w | 2025-04-07 | 2025-07-08 | 15 | 25.88d |
| 20 |  | Создание мультимедиа – наполнения | 6w | 2025-04-07 | 2025-05-23 | 7 | 60d |
| 21 |  | Наполнение сайта | 3w | 2025-03-11 | 2025-04-01 | 12 | 74d |
| 22 | 4 | **Тестирование** | 75d | 2025-04-28 | 2025-08-19 |  | 0d |
| 23 |  | Тестирование модели ядра | 1w | 2025-04-28 | 2025-05-07 | 16 | 0d |
| 24 |  | Тестирование сайта | 4w | 2025-07-22 | 2025-08-19 | 14, 17, 21 | 0d |
| 25 | 5 | **Написание документации** | 17d | 2025-05-23 | 2025-06-19 |  | 43d |
| 26 |  | Создание справочной системы | 2w | 2025-05-23 | 2025-06-06 | 14 | 50d |
| 27 | 5.2 | **Создание руководства пользователя** | 17d | 2025-05-23 | 2025-06-19 | 14 | 43d |
| 28 |  | Разработка дизайна руководства | 1w | 2025-05-23 | 2025-05-30 |  | 43d |
| 29 |  | Написание руководства пользователя | 3w | 2025-05-27 | 2025-06-19 | 28SS+2d | 43d |
| 30 |  | Сдача сайта в эксплуатацию | 0w | 2025-08-19 | 2025-08-19 | 24 | 0d |

## Version 2 (data date 2025-05-11, saved 2025-04-08, file Lab5_1.mpp)

Note of the change: Добавлен курс ЭПИ

Last finish 2025-08-19 → 2025-08-13 (-6d). Complete tasks 0 → 16.

Added:

| ID | Task | Duration | Start | Finish | Predecessors | Constraint | Resources |
| --- | --- | --- | --- | --- | --- | --- | --- |
| 2 | Совещание 1 | 1h | 2025-03-05 09:00 A | 2025-03-05 10:00 A |  | start no earlier than 2025-03-05 09:00 | 3D аниматор; Web-дизайнер; Ведущий программист; Мультимедиа-корреспондент; Системный аналитик; Технический писатель; Художник-дизайнер |
| 3 | Совещание 2 | 1h | 2025-03-12 09:00 A | 2025-03-12 10:00 A |  | start no earlier than 2025-03-12 09:00 | Web-дизайнер; Ведущий программист; Мультимедиа-корреспондент; Системный аналитик; Технический писатель; Художник-дизайнер |
| 6 | **Обновленное совещание** | 83.88d | 2025-04-02 09:00 A | 2025-08-06 10:00 |  |  |  |
| 7 | Обновленное совещание 1 | 1h | 2025-04-02 09:00 A | 2025-04-02 10:00 A |  | start no earlier than 2025-04-02 09:00 | Web-дизайнер; Ведущий программист; Мультимедиа-корреспондент; Системный аналитик; Технический писатель |
| 8 | Обновленное совещание 2 | 1h | 2025-04-16 09:00 A | 2025-04-16 10:00 A |  | start no earlier than 2025-04-16 09:00 | Web-дизайнер; Ведущий программист; Мультимедиа-корреспондент; Системный аналитик; Технический писатель |
| 9 | Обновленное совещание 3 | 1h | 2025-04-30 09:00 A | 2025-04-30 10:00 A |  | start no earlier than 2025-04-30 09:00 | Web-дизайнер; Ведущий программист; Мультимедиа-корреспондент; Системный аналитик; Технический писатель |
| 10 | Обновленное совещание 4 | 1h | 2025-05-14 09:00 | 2025-05-14 10:00 |  | start no earlier than 2025-05-14 09:00 | Web-дизайнер; Ведущий программист; Мультимедиа-корреспондент; Системный аналитик; Технический писатель |
| 11 | Обновленное совещание 5 | 1h | 2025-05-28 09:00 | 2025-05-28 10:00 |  | start no earlier than 2025-05-28 09:00 | Web-дизайнер; Ведущий программист; Мультимедиа-корреспондент; Системный аналитик; Технический писатель |
| 12 | Обновленное совещание 6 | 1h | 2025-06-11 09:00 | 2025-06-11 10:00 |  | start no earlier than 2025-06-11 09:00 | Web-дизайнер; Ведущий программист; Мультимедиа-корреспондент; Системный аналитик; Технический писатель |
| 13 | Обновленное совещание 7 | 1h | 2025-06-25 09:00 | 2025-06-25 10:00 |  | start no earlier than 2025-06-25 09:00 | Web-дизайнер; Ведущий программист; Мультимедиа-корреспондент; Системный аналитик; Технический писатель |
| 14 | Обновленное совещание 8 | 1h | 2025-07-09 09:00 | 2025-07-09 10:00 |  | start no earlier than 2025-07-09 09:00 | Web-дизайнер; Ведущий программист; Мультимедиа-корреспондент; Системный аналитик; Технический писатель |
| 15 | Обновленное совещание 9 | 1h | 2025-07-23 09:00 | 2025-07-23 10:00 |  | start no earlier than 2025-07-23 09:00 | Web-дизайнер; Ведущий программист; Мультимедиа-корреспондент; Системный аналитик; Технический писатель |
| 16 | Обновленное совещание 10 | 1h | 2025-08-06 09:00 | 2025-08-06 10:00 |  | start no earlier than 2025-08-06 09:00 | Web-дизайнер; Ведущий программист; Мультимедиа-корреспондент; Системный аналитик; Технический писатель |
| 18 | **Создание интерфейса** | 86.98d | 2025-03-03 09:00 A | 2025-07-10 11:50 | 17 |  |  |
| 24 | **Построение базы объектов** | 90.25d | 2025-03-25 09:00 A | 2025-08-06 13:00 |  |  | Сервер; Свой сервер |
| 28 | **Создание ядра GIS** | 71.98d | 2025-03-03 09:00 A | 2025-06-19 11:50 |  |  |  |
| 38 | **Создание web – сайта и поддержка** | 24.39d | 2025-06-30 11:50 | 2025-08-01 15:55 |  |  |  |

Removed: 13 Кодирование; 18 Наполнение; 22 Тестирование; 25 Написание документации

Changed:

| ID | Task | Start | Finish | Duration | Complete | Total float | Predecessors | Other |
| --- | --- | --- | --- | --- | --- | --- | --- | --- |
| 1 | **Совещание** | 2025-03-03 → 2025-03-05 09:00 A (+2d) | 2025-03-24 → 2025-08-06 10:00 (+135d) | 15d → 103.75d | 0% → 50% | 0d → 4.94d |  | was named Проектирование; baseline start none → 2025-03-05 09:00; baseline finish none → 2025-08-06 18:00 |
| 4 | Совещание 3 | 2025-03-03 → 2025-03-19 09:00 A (+16d) | 2025-07-22 → 2025-03-19 10:00 A (-125d) | 95d → 1h | 0% → 100% | 0d → none |  | was named Разработка; constraint none → start no earlier than 2025-03-19 09:00; resources none → Web-дизайнер; Ведущий программист; Мультимедиа-корреспондент; Системный аналитик; Технический писатель; Художник-дизайнер; baseline start none → 2025-03-19 09:00; baseline finish none → 2025-03-19 10:00 |
| 5 | Совещание 4 | 2025-03-03 → 2025-03-26 09:00 A (+23d) | 2025-04-07 → 2025-03-26 10:00 A (-12d) | 5w → 1h | 0% → 100% |  |  | was named Дизайн; constraint none → start no earlier than 2025-03-26 09:00; resources none → 3D аниматор; Web-дизайнер; Ведущий программист; Мультимедиа-корреспондент; Системный аналитик; Технический писатель; Художник-дизайнер; baseline start none → 2025-03-26 09:00; baseline finish none → 2025-03-26 10:00 |
| 17 | Начало проекта | 2025-03-03 → 2025-03-03 09:00 A | 2025-03-03 → 2025-03-03 09:00 A |  | 0% → 100% | 0d → none |  | baseline start none → 2025-03-03 09:00; baseline finish none → 2025-03-03 09:00 |
| 19 | **Разработка дизайна интерфейса** | 2025-03-03 → 2025-03-03 09:00 A | 2025-04-07 → 2025-04-14 12:51 A (+7d) | 25d → 30.36d | 0% → 100% | 55d → none |  | baseline start none → 2025-03-03 09:00; baseline finish none → 2025-04-08 11:00 |
| 20 | Разработка 2D графических элементов | 2025-03-03 → 2025-03-03 09:00 A | 2025-03-24 → 2025-03-26 15:00 A (+2d) |  | 0% → 100% | 55d → none | 17 → none | constraint none → finish no earlier than 2025-03-24 18:00; baseline start none → 2025-03-03 09:00; baseline finish none → 2025-03-24 18:00 |
| 21 | Разработка 3D графических элементов | 2025-03-03 → 2025-03-03 09:00 A | 2025-03-17 → 2025-03-19 18:00 A (+2d) | 2w → 1.45w | 0% → 100% | 55d → none |  | resources 3D аниматор → 3D аниматор; Художник-дизайнер [40%]; baseline start none → 2025-03-03 09:00; baseline finish none → 2025-03-17 17:00 |
| 22 | Создание заставки | 2025-03-17 → 2025-03-20 09:00 A (+3d) | 2025-04-07 → 2025-04-14 12:51 A (+7d) |  | 0% → 100% | 55d → none |  | constraint none → start no earlier than 2025-03-20 09:00; resources 3D аниматор → 3D аниматор; Художник-дизайнер [40%]; baseline start none → 2025-03-17 17:00; baseline finish none → 2025-04-08 11:00 |
| 23 | Программирование интерфейса | 2025-04-28 → 2025-06-19 11:50 (+52d) | 2025-05-23 → 2025-07-10 11:50 (+48d) |  |  | 40d → 0d | 19, 30 → 19, 28 | baseline start none → 2025-06-18 17:55; baseline finish none → 2025-07-09 17:55 |
| 25 | Анализ и построение структуры базы объектов | 2025-03-03 → 2025-03-25 09:00 A (+22d) | 2025-03-17 → 2025-04-10 11:00 A (+24d) | 2w → 2.4w | 0% → 100% | 25.88d → none | 17 → none | resources Системный аналитик; Сервер → Системный аналитик; baseline start none → 2025-03-25 09:00; baseline finish none → 2025-04-08 11:00 |
| 26 | Программирование средств обработки базы объектов | 2025-03-17 → 2025-04-10 11:00 A (+24d) | 2025-04-07 → 2025-05-12 12:00 A (+35d) | 3w → 3.6w | 0% → 100% | 25.88d → none |  | resources Программист#3; Программист#4; Сервер → Программист#3; Программист#4; baseline start none → 2025-04-08 11:00; baseline finish none → 2025-04-29 11:00 |
| 27 | Наполнение базы объектов | 2025-04-07 → 2025-05-12 12:00 (+35d) | 2025-07-08 → 2025-08-06 13:00 (+29d) |  |  | 25.88d → 4.56d |  | resources Наборщик данных#1; Наборщик данных#2; Наборщик данных#3; Наборщик данных#4; Наборщик данных#5; Сервер → Наборщик данных#1; Наборщик данных#2; Наборщик данных#3; Наборщик данных#4; Наборщик данных#5; baseline start none → 2025-04-29 11:00; baseline finish none → 2025-07-30 13:00 |
| 29 | Анализ и проектирование ядра | 2025-03-03 → 2025-03-03 09:00 A | 2025-03-24 → 2025-03-24 18:00 A |  | 0% → 100% | 0d → none | 17 → none | baseline start none → 2025-03-03 09:00; baseline finish none → 2025-03-24 18:00 |
| 30 | Создание модели ядра | 2025-03-24 → 2025-03-25 09:00 A (+1d) | 2025-04-28 → 2025-04-17 09:13 A (-11d) | 5w → 3.41w | 0% → 100% | 0d → none |  | resources Ведущий программист; Программист#1 → Ведущий программист; Программист#1; Программист#2; baseline start none → 2025-03-25 09:00; baseline finish none → 2025-04-17 09:13 |
| 31 | Тестирование модели ядра | 2025-04-28 → 2025-04-17 09:13 A (-11d) | 2025-05-07 → 2025-04-24 09:13 A (-13d) |  | 0% → 100% | 0d → none |  | baseline start none → 2025-04-17 09:13; baseline finish none → 2025-04-24 09:13 |
| 32 | Создание рабочей версии ядра | 2025-05-07 → 2025-04-24 09:13 A (-13d) | 2025-07-22 → 2025-06-19 11:50 (-33d) | 10w → 6.82w | 0% → 23% |  |  | resources Ведущий программист; Программист#1; Программист#2 → Ведущий программист; Программист#1; Программист#2; Программист#3; Программист#4; baseline start none → 2025-04-24 09:13; baseline finish none → 2025-06-18 17:55 |
| 33 | Создание мультимедиа – наполнения | 2025-04-07 → 2025-04-14 12:51 A (+7d) | 2025-05-23 → 2025-06-05 11:51 (+13d) |  | 0% → 45% | 60d → 46.58d |  | baseline start none → 2025-04-08 11:00; baseline finish none → 2025-05-27 11:00 |
| 34 | Создание справочной системы | 2025-05-23 → 2025-07-23 10:00 (+61d) | 2025-06-06 → 2025-08-06 13:00 (+61d) |  |  | 50d → 4.56d |  | baseline start none → 2025-07-22 09:31; baseline finish none → 2025-08-05 12:31 |
| 35 | **Создание руководства пользователя** | 2025-05-23 → 2025-06-26 11:50 (+34d) | 2025-06-19 → 2025-07-22 12:26 (+33d) | 17d → 18.08d |  | 43d → 0d | 23 → 23FS-10d | baseline start none → 2025-06-25 17:55; baseline finish none → 2025-07-22 09:31 |
| 36 | Разработка дизайна руководства | 2025-05-23 → 2025-06-26 11:50 (+34d) | 2025-05-30 → 2025-07-03 15:50 (+34d) |  |  | 43d → 0d |  | baseline start none → 2025-06-25 17:55; baseline finish none → 2025-07-03 11:55 |
| 37 | Написание руководства пользователя | 2025-05-27 → 2025-06-30 11:50 (+34d) | 2025-06-19 → 2025-07-22 12:26 (+33d) |  |  | 43d → 0d |  | baseline start none → 2025-06-27 17:55; baseline finish none → 2025-07-22 09:31 |
| 39 | Разработка структуры сайта | 2025-03-03 → 2025-06-30 11:50 (+119d) | 2025-03-03 → 2025-07-01 11:50 (+120d) |  |  | 74d → 0d | 17 → 37SS | baseline start none → 2025-06-27 17:55; baseline finish none → 2025-06-30 17:55 |
| 40 | Разработка дизайна сайта | 2025-03-04 → 2025-07-01 11:50 (+119d) | 2025-03-11 → 2025-07-11 09:50 (+122d) | 1w → 1.4w |  | 74d → 0d |  | resources 3D аниматор; Web-дизайнер; Художник-дизайнер → Web-дизайнер; 3D аниматор; Художник-дизайнер; baseline start none → 2025-06-30 17:55; baseline finish none → 2025-07-10 15:55 |
| 41 | Наполнение сайта | 2025-03-11 → 2025-07-11 09:50 (+122d) | 2025-04-01 → 2025-08-01 15:55 (+122d) |  |  | 74d → 0d |  | baseline start none → 2025-07-10 15:55; baseline finish none → 2025-08-01 12:00 |
| 42 | Тестирование сайта | 2025-07-22 → 2025-07-25 15:55 (+3d) | 2025-08-19 → 2025-08-13 09:29 (-6d) | 4w → 2.46w |  |  | 23, 32, 41 → 38FS-1w | resources Ведущий программист; Программист#1; Программист#2 → Ведущий программист; Программист#1; Программист#2; Программист#3; Программист#4; baseline start none → 2025-07-25 12:00; baseline finish none → 2025-08-12 15:34 |
| 43 | Сдача сайта в эксплуатацию | 2025-08-19 → 2025-08-13 09:29 (-6d) | 2025-08-19 → 2025-08-13 09:29 (-6d) | 0w → 0d |  |  |  | baseline start none → 2025-08-12 15:34; baseline finish none → 2025-08-12 15:34 |
