# rk_2

How a schedule from MS Project changed from version to version. A marks actual dates.

## Version 1 (saved 2025-03-25, file rk_2.mpp)

Note of the change: Добавлен курс ЭПИ

| ID | WBS | Task | Duration | Start | Finish | Total float |
| --- | --- | --- | --- | --- | --- | --- |
| 1 | 1 | **Проект РК** | 15d | 2025-04-07 | 2025-04-25 | 0d |
| 2 |  | Начало реализации проекта | 0d | 2025-04-07 | 2025-04-07 | 15d |
| 3 |  | Программирование | 1d | 2025-04-07 | 2025-04-07 | 14d |
| 4 |  | Постановка задачи | 5d | 2025-04-07 | 2025-04-11 | 10d |
| 5 |  | Разработка интерфейса | 10d | 2025-04-07 | 2025-04-18 | 5d |
| 6 |  | Разработка модулей обработки данных | 15d | 2025-04-07 | 2025-04-25 | 0d |
| 7 |  | Разработка базы данных | 15d | 2025-04-07 | 2025-04-25 | 0d |
| 8 |  | Заполнение базы данных | 12d | 2025-04-07 | 2025-04-22 | 3d |
| 9 |  | Программирование завершено | 0d | 2025-04-07 | 2025-04-07 | 15d |
| 10 |  | Тестирование и отладка | 1d | 2025-04-07 | 2025-04-07 | 14d |
| 11 |  | Подготовка тестовых наборов данных | 5d | 2025-04-07 | 2025-04-11 | 10d |
| 12 |  | Тестирование и исправление ошибок | 15d | 2025-04-07 | 2025-04-25 | 0d |
| 13 |  | Отладка завершена | 0d | 2025-04-07 | 2025-04-07 | 15d |
| 14 |  | Разработка документации | 1d | 2025-04-07 | 2025-04-07 | 14d |
| 15 |  | Составление программной документации | 10d | 2025-04-07 | 2025-04-18 | 5d |
| 16 |  | Составление пользовательской документации | 15d | 2025-04-07 | 2025-04-25 | 0d |
| 17 |  | Конец проекта | 0d | 2025-04-07 | 2025-04-07 | 15d |

## Version 2 (saved 2025-03-25, file rk_3.mpp)

Note of the change: Добавлен курс ЭПИ

Last finish stays 2025-04-25.

Changed:

| ID | Task | Finish | Duration | Total float |
| --- | --- | --- | --- | --- |
| 3 | **Программирование** | 2025-04-07 → 2025-04-25 (+18d) | 1d → 15d | 14d → 0d |
| 10 | **Тестирование и отладка** | 2025-04-07 → 2025-04-25 (+18d) | 1d → 15d | 14d → 0d |
| 14 | **Разработка документации** | 2025-04-07 → 2025-04-25 (+18d) | 1d → 15d | 14d → 0d |

## Version 3 (saved 2025-03-25, file rk_4.mpp)

Note of the change: Добавлен курс ЭПИ

Last finish 2025-04-25 → 2025-07-18 (+84d).

Changed:

| ID | Task | Start | Finish | Duration | Total float | Predecessors |
| --- | --- | --- | --- | --- | --- | --- |
| 1 | **Проект РК** |  | 2025-04-25 → 2025-07-18 (+84d) | 15d → 68d |  |  |
| 3 | **Программирование** | 2025-04-07 → 2025-04-08 (+1d) | 2025-04-25 → 2025-05-28 (+33d) | 15d → 32d |  |  |
| 4 | Постановка задачи | 2025-04-07 → 2025-04-08 (+1d) | 2025-04-11 → 2025-04-14 (+3d) |  | 10d → 0d | none → 2FS+1d |
| 5 | Разработка интерфейса | 2025-04-07 → 2025-04-15 (+8d) | 2025-04-18 → 2025-04-28 (+10d) |  | 5d → 2d | none → 4 |
| 6 | Разработка модулей обработки данных | 2025-04-07 → 2025-04-29 (+22d) | 2025-04-25 → 2025-05-26 (+31d) |  | 0d → 2d | none → 5 |
| 7 | Разработка базы данных | 2025-04-07 → 2025-04-15 (+8d) | 2025-04-25 → 2025-05-12 (+17d) |  |  | none → 4 |
| 8 | Заполнение базы данных | 2025-04-07 → 2025-05-12 (+35d) | 2025-04-22 → 2025-05-28 (+36d) |  | 3d → 0d | none → 7 |
| 9 | Программирование завершено | 2025-04-07 → 2025-05-28 (+51d) | 2025-04-07 → 2025-05-28 (+51d) |  | 15d → 0d | none → 6, 8 |
| 10 | **Тестирование и отладка** | 2025-04-07 → 2025-05-21 (+44d) | 2025-04-25 → 2025-06-20 (+56d) | 15d → 20d | 0d → 20d |  |
| 11 | Подготовка тестовых наборов данных | 2025-04-07 → 2025-05-21 (+44d) | 2025-04-11 → 2025-05-28 (+47d) |  | 10d → 20d | none → 9FS-5d |
| 12 | Тестирование и исправление ошибок | 2025-04-07 → 2025-05-28 (+51d) | 2025-04-25 → 2025-06-20 (+56d) |  | 0d → 20d | none → 11 |
| 13 | Отладка завершена | 2025-04-07 → 2025-06-20 (+74d) | 2025-04-07 → 2025-06-20 (+74d) |  | 15d → 20d | none → 12 |
| 14 | **Разработка документации** | 2025-04-07 → 2025-06-11 (+65d) | 2025-04-25 → 2025-07-18 (+84d) | 15d → 25d |  |  |
| 15 | Составление программной документации | 2025-04-07 → 2025-06-11 (+65d) | 2025-04-18 → 2025-06-27 (+70d) |  | 5d → 0d | none → 9SS+10d |
| 16 | Составление пользовательской документации | 2025-04-07 → 2025-06-27 (+81d) | 2025-04-25 → 2025-07-18 (+84d) |  |  | none → 15 |
| 17 | Конец проекта | 2025-04-07 → 2025-07-18 (+102d) | 2025-04-07 → 2025-07-18 (+102d) |  | 15d → 0d | none → 16 |

## Version 4 (saved 2025-03-25, file rk_7.mpp)

Note of the change: Добавлен курс ЭПИ

Last finish 2025-07-18 → 2025-08-01 (+14d).

Changed:

| ID | Task | Start | Finish | Duration | Total float | Other |
| --- | --- | --- | --- | --- | --- | --- |
| 1 | **Проект РК** |  | 2025-07-18 → 2025-08-01 (+14d) | 68d → 78d |  |  |
| 3 | **Программирование** |  | 2025-05-28 → 2025-06-11 (+14d) | 32d → 42d |  | resources none → Сервер базы данных |
| 4 | Постановка задачи |  |  |  |  | resources none → Аналитик; Ведущий программист |
| 5 | Разработка интерфейса |  |  |  | 2d → 7d | resources none → Ведущий программист; Программист 1 |
| 6 | Разработка модулей обработки данных |  | 2025-05-26 → 2025-06-02 (+7d) | 15d → 20d | 2d → 7d | resources none → Программист 2; Программист 3 |
| 7 | Разработка базы данных |  | 2025-05-12 → 2025-05-26 (+14d) | 15d → 25d |  | resources none → Аналитик; Программист 1; Программист 2 |
| 8 | Заполнение базы данных | 2025-05-12 → 2025-05-26 (+14d) | 2025-05-28 → 2025-06-11 (+14d) |  |  | resources none → Наборщики данных |
| 9 | Программирование завершено | 2025-05-28 → 2025-06-11 (+14d) | 2025-05-28 → 2025-06-11 (+14d) |  |  |  |
| 10 | **Тестирование и отладка** | 2025-05-21 → 2025-06-04 (+14d) | 2025-06-20 → 2025-07-04 (+14d) |  |  |  |
| 11 | Подготовка тестовых наборов данных | 2025-05-21 → 2025-06-04 (+14d) | 2025-05-28 → 2025-06-11 (+14d) |  |  | resources none → Программист 1; Программист 3 |
| 12 | Тестирование и исправление ошибок | 2025-05-28 → 2025-06-11 (+14d) | 2025-06-20 → 2025-07-04 (+14d) |  |  | resources none → Ведущий программист; Программист 2 |
| 13 | Отладка завершена | 2025-06-20 → 2025-07-04 (+14d) | 2025-06-20 → 2025-07-04 (+14d) |  |  |  |
| 14 | **Разработка документации** | 2025-06-11 → 2025-06-27 (+16d) | 2025-07-18 → 2025-08-01 (+14d) |  |  | resources none → Бумага [0.01 пач]; Картриджи для принтера [0.01 шт] |
| 15 | Составление программной документации | 2025-06-11 → 2025-06-27 (+16d) | 2025-06-27 → 2025-07-11 (+14d) |  |  | resources none → Технический писатель |
| 16 | Составление пользовательской документации | 2025-06-27 → 2025-07-11 (+14d) | 2025-07-18 → 2025-08-01 (+14d) |  |  | resources none → Технический писатель |
| 17 | Конец проекта | 2025-07-18 → 2025-08-01 (+14d) | 2025-07-18 → 2025-08-01 (+14d) |  |  |  |

## Version 5 (saved 2025-03-25, file rk_9.mpp)

Note of the change: Добавлен курс ЭПИ

Last finish 2025-08-01 → 2025-07-29 (-3d).

Added:

| ID | Task | Duration | Start | Finish | Constraint | Resources |
| --- | --- | --- | --- | --- | --- | --- |
| 2 | **Профилактика оборудования** | 64.12d | 2025-04-15 09:00 | 2025-07-22 12:00 |  |  |
| 3 | Профилактика оборудования 1 | 3h | 2025-04-15 09:00 | 2025-04-15 12:00 | start no earlier than 2025-04-15 09:00 | Специалист для профилактики |
| 4 | Профилактика оборудования 2 | 3h | 2025-04-29 09:00 | 2025-04-29 12:00 | start no earlier than 2025-04-29 09:00 | Специалист для профилактики |
| 5 | Профилактика оборудования 3 | 3h | 2025-05-13 09:00 | 2025-05-13 12:00 | start no earlier than 2025-05-13 09:00 | Специалист для профилактики |
| 6 | Профилактика оборудования 4 | 3h | 2025-05-27 09:00 | 2025-05-27 12:00 | start no earlier than 2025-05-27 09:00 | Специалист для профилактики |
| 7 | Профилактика оборудования 5 | 3h | 2025-06-10 09:00 | 2025-06-10 12:00 | start no earlier than 2025-06-10 09:00 | Специалист для профилактики |
| 8 | Профилактика оборудования 6 | 3h | 2025-06-24 09:00 | 2025-06-24 12:00 | start no earlier than 2025-06-24 09:00 | Специалист для профилактики |
| 9 | Профилактика оборудования 7 | 3h | 2025-07-08 09:00 | 2025-07-08 12:00 | start no earlier than 2025-07-08 09:00 | Специалист для профилактики |
| 10 | Профилактика оборудования 8 | 3h | 2025-07-22 09:00 | 2025-07-22 12:00 | start no earlier than 2025-07-22 09:00 | Специалист для профилактики |

Changed:

| ID | Task | Start | Finish | Duration | Total float | Other |
| --- | --- | --- | --- | --- | --- | --- |
| 1 | **Проект РК** | 2025-04-07 → 2025-04-07 09:00 | 2025-08-01 → 2025-07-29 17:08 (-3d) | 78d → 72.64d |  | baseline start none → 2025-04-07 09:00; baseline finish none → 2025-07-29 17:08 |
| 11 | Начало реализации проекта | 2025-04-07 → 2025-04-07 09:00 | 2025-04-07 → 2025-04-07 09:00 |  |  | baseline start none → 2025-04-07 09:00; baseline finish none → 2025-04-07 09:00 |
| 12 | **Программирование** | 2025-04-08 → 2025-04-08 09:00 | 2025-06-11 → 2025-06-05 11:08 (-6d) | 42d → 36.64d |  | baseline start none → 2025-04-08 09:00; baseline finish none → 2025-06-05 11:08 |
| 13 | Постановка задачи | 2025-04-08 → 2025-04-08 09:00 | 2025-04-14 → 2025-04-14 18:00 |  |  | baseline start none → 2025-04-08 09:00; baseline finish none → 2025-04-14 18:00 |
| 14 | Разработка интерфейса | 2025-04-15 → 2025-04-15 12:00 | 2025-04-28 → 2025-04-29 16:00 (+1d) |  | 7d → 0.95d | baseline start none → 2025-04-15 12:00; baseline finish none → 2025-04-29 16:00 |
| 15 | Разработка модулей обработки данных | 2025-04-29 → 2025-05-12 17:00 (+13d) | 2025-06-02 → 2025-06-04 15:34 (+2d) | 20d → 16.07d | 7d → 0.57d | baseline start none → 2025-05-12 17:00; baseline finish none → 2025-06-04 15:34 |
| 16 | Разработка базы данных | 2025-04-15 → 2025-04-15 12:00 | 2025-05-26 → 2025-05-19 17:08 (-7d) | 25d → 19.64d |  | resources Аналитик; Программист 1; Программист 2 → Аналитик; Программист 1; Программист 2; Программист 3; baseline start none → 2025-04-15 12:00; baseline finish none → 2025-05-19 17:08 |
| 17 | Заполнение базы данных | 2025-05-26 → 2025-05-19 17:08 (-7d) | 2025-06-11 → 2025-06-05 11:08 (-6d) |  |  | baseline start none → 2025-05-19 17:08; baseline finish none → 2025-06-05 11:08 |
| 18 | Программирование завершено | 2025-06-11 → 2025-06-05 11:08 (-6d) | 2025-06-11 → 2025-06-05 11:08 (-6d) |  |  | baseline start none → 2025-06-05 11:08; baseline finish none → 2025-06-05 11:08 |
| 19 | **Тестирование и отладка** | 2025-06-04 → 2025-05-29 11:08 (-6d) | 2025-07-04 → 2025-07-07 14:34 (+3d) | 20d → 24.43d | 20d → 15.57d | baseline start none → 2025-05-29 11:08; baseline finish none → 2025-07-07 14:34 |
| 20 | Подготовка тестовых наборов данных | 2025-06-04 → 2025-05-29 11:08 (-6d) | 2025-06-11 → 2025-06-16 10:34 (+5d) | 5d → 9.43d | 20d → 15.57d | baseline start none → 2025-05-29 11:08; baseline finish none → 2025-06-16 10:34 |
| 21 | Тестирование и исправление ошибок | 2025-06-11 → 2025-06-16 10:34 (+5d) | 2025-07-04 → 2025-07-07 14:34 (+3d) |  | 20d → 15.57d | baseline start none → 2025-06-16 10:34; baseline finish none → 2025-07-07 14:34 |
| 22 | Отладка завершена | 2025-07-04 → 2025-07-07 14:34 (+3d) | 2025-07-04 → 2025-07-07 14:34 (+3d) |  | 20d → 15.57d | baseline start none → 2025-07-07 14:34; baseline finish none → 2025-07-07 14:34 |
| 23 | **Разработка документации** | 2025-06-27 → 2025-06-23 16:08 (-4d) | 2025-08-01 → 2025-07-29 17:08 (-3d) |  |  | baseline start none → 2025-06-23 16:08; baseline finish none → 2025-07-29 17:08 |
| 24 | Составление программной документации | 2025-06-27 → 2025-06-23 16:08 (-4d) | 2025-07-11 → 2025-07-08 14:08 (-3d) |  |  | baseline start none → 2025-06-23 16:08; baseline finish none → 2025-07-08 14:08 |
| 25 | Составление пользовательской документации | 2025-07-11 → 2025-07-08 14:08 (-3d) | 2025-08-01 → 2025-07-29 17:08 (-3d) |  |  | baseline start none → 2025-07-08 14:08; baseline finish none → 2025-07-29 17:08 |
| 26 | Конец проекта | 2025-08-01 → 2025-07-29 17:08 (-3d) | 2025-08-01 → 2025-07-29 17:08 (-3d) |  |  | baseline start none → 2025-07-29 17:08; baseline finish none → 2025-07-29 17:08 |

## Version 6 (saved 2025-03-25, file rk_6.mpp)

Note of the change: Добавлен курс ЭПИ

Last finish 2025-07-29 → 2025-07-18 (-11d).

Removed: 2 Профилактика оборудования; 3 Профилактика оборудования 1; 4 Профилактика оборудования 2; 5 Профилактика оборудования 3; 6 Профилактика оборудования 4; 7 Профилактика оборудования 5; 8 Профилактика оборудования 6; 9 Профилактика оборудования 7; 10 Профилактика оборудования 8

Changed:

| ID | Task | Start | Finish | Duration | Total float | Other |
| --- | --- | --- | --- | --- | --- | --- |
| 1 | **Проект РК** | 2025-04-07 09:00 → 2025-04-07 | 2025-07-29 17:08 → 2025-07-18 (-11d) | 72.64d → 68d |  | baseline start 2025-04-07 09:00 → none; baseline finish 2025-07-29 17:08 → none |
| 2 | Начало реализации проекта | 2025-04-07 09:00 → 2025-04-07 | 2025-04-07 09:00 → 2025-04-07 |  |  | baseline start 2025-04-07 09:00 → none; baseline finish 2025-04-07 09:00 → none |
| 3 | **Программирование** | 2025-04-08 09:00 → 2025-04-08 | 2025-06-05 11:08 → 2025-05-28 (-8d) | 36.64d → 32d |  | baseline start 2025-04-08 09:00 → none; baseline finish 2025-06-05 11:08 → none |
| 4 | Постановка задачи | 2025-04-08 09:00 → 2025-04-08 | 2025-04-14 18:00 → 2025-04-14 |  |  | baseline start 2025-04-08 09:00 → none; baseline finish 2025-04-14 18:00 → none |
| 5 | Разработка интерфейса | 2025-04-15 12:00 → 2025-04-15 | 2025-04-29 16:00 → 2025-04-28 (-1d) |  | 0.95d → 2d | baseline start 2025-04-15 12:00 → none; baseline finish 2025-04-29 16:00 → none |
| 6 | Разработка модулей обработки данных | 2025-05-12 17:00 → 2025-04-29 (-13d) | 2025-06-04 15:34 → 2025-05-26 (-9d) | 16.07d → 15d | 0.57d → 2d | baseline start 2025-05-12 17:00 → none; baseline finish 2025-06-04 15:34 → none |
| 7 | Разработка базы данных | 2025-04-15 12:00 → 2025-04-15 | 2025-05-19 17:08 → 2025-05-12 (-7d) | 19.64d → 15d |  | resources Аналитик; Программист 1; Программист 2; Программист 3 → Аналитик; Программист 1; Программист 2; baseline start 2025-04-15 12:00 → none; baseline finish 2025-05-19 17:08 → none |
| 8 | Заполнение базы данных | 2025-05-19 17:08 → 2025-05-12 (-7d) | 2025-06-05 11:08 → 2025-05-28 (-8d) |  |  | baseline start 2025-05-19 17:08 → none; baseline finish 2025-06-05 11:08 → none |
| 9 | Программирование завершено | 2025-06-05 11:08 → 2025-05-28 (-8d) | 2025-06-05 11:08 → 2025-05-28 (-8d) |  |  | baseline start 2025-06-05 11:08 → none; baseline finish 2025-06-05 11:08 → none |
| 10 | **Тестирование и отладка** | 2025-05-29 11:08 → 2025-05-21 (-8d) | 2025-07-07 14:34 → 2025-06-20 (-17d) | 24.43d → 20d | 15.57d → 20d | baseline start 2025-05-29 11:08 → none; baseline finish 2025-07-07 14:34 → none |
| 11 | Подготовка тестовых наборов данных | 2025-05-29 11:08 → 2025-05-21 (-8d) | 2025-06-16 10:34 → 2025-05-28 (-19d) | 9.43d → 5d | 15.57d → 20d | baseline start 2025-05-29 11:08 → none; baseline finish 2025-06-16 10:34 → none |
| 12 | Тестирование и исправление ошибок | 2025-06-16 10:34 → 2025-05-28 (-19d) | 2025-07-07 14:34 → 2025-06-20 (-17d) |  | 15.57d → 20d | baseline start 2025-06-16 10:34 → none; baseline finish 2025-07-07 14:34 → none |
| 13 | Отладка завершена | 2025-07-07 14:34 → 2025-06-20 (-17d) | 2025-07-07 14:34 → 2025-06-20 (-17d) |  | 15.57d → 20d | baseline start 2025-07-07 14:34 → none; baseline finish 2025-07-07 14:34 → none |
| 14 | **Разработка документации** | 2025-06-23 16:08 → 2025-06-11 (-12d) | 2025-07-29 17:08 → 2025-07-18 (-11d) |  |  | baseline start 2025-06-23 16:08 → none; baseline finish 2025-07-29 17:08 → none |
| 15 | Составление программной документации | 2025-06-23 16:08 → 2025-06-11 (-12d) | 2025-07-08 14:08 → 2025-06-27 (-11d) |  |  | baseline start 2025-06-23 16:08 → none; baseline finish 2025-07-08 14:08 → none |
| 16 | Составление пользовательской документации | 2025-07-08 14:08 → 2025-06-27 (-11d) | 2025-07-29 17:08 → 2025-07-18 (-11d) |  |  | baseline start 2025-07-08 14:08 → none; baseline finish 2025-07-29 17:08 → none |
| 17 | Конец проекта | 2025-07-29 17:08 → 2025-07-18 (-11d) | 2025-07-29 17:08 → 2025-07-18 (-11d) |  |  | baseline start 2025-07-29 17:08 → none; baseline finish 2025-07-29 17:08 → none |

## Version 7 (saved 2025-03-25, file rk_8.mpp)

Note of the change: Добавлен курс ЭПИ

Last finish 2025-07-18 → 2025-08-06 (+19d).

Added:

| ID | Task | Duration | Start | Finish | Constraint | Resources |
| --- | --- | --- | --- | --- | --- | --- |
| 2 | **Профилактика оборудования** | 74.12d | 2025-04-15 09:00 | 2025-08-05 12:00 |  |  |
| 3 | Профилактика оборудования 1 | 3h | 2025-04-15 09:00 | 2025-04-15 12:00 | start no earlier than 2025-04-15 09:00 | Специалист для профилактики |
| 4 | Профилактика оборудования 2 | 3h | 2025-04-29 09:00 | 2025-04-29 12:00 | start no earlier than 2025-04-29 09:00 | Специалист для профилактики |
| 5 | Профилактика оборудования 3 | 3h | 2025-05-13 09:00 | 2025-05-13 12:00 | start no earlier than 2025-05-13 09:00 | Специалист для профилактики |
| 6 | Профилактика оборудования 4 | 3h | 2025-05-27 09:00 | 2025-05-27 12:00 | start no earlier than 2025-05-27 09:00 | Специалист для профилактики |
| 7 | Профилактика оборудования 5 | 3h | 2025-06-10 09:00 | 2025-06-10 12:00 | start no earlier than 2025-06-10 09:00 | Специалист для профилактики |
| 8 | Профилактика оборудования 6 | 3h | 2025-06-24 09:00 | 2025-06-24 12:00 | start no earlier than 2025-06-24 09:00 | Специалист для профилактики |
| 9 | Профилактика оборудования 7 | 3h | 2025-07-08 09:00 | 2025-07-08 12:00 | start no earlier than 2025-07-08 09:00 | Специалист для профилактики |
| 10 | Профилактика оборудования 8 | 3h | 2025-07-22 09:00 | 2025-07-22 12:00 | start no earlier than 2025-07-22 09:00 | Специалист для профилактики |
| 11 | Профилактика оборудования 9 | 3h | 2025-08-05 09:00 | 2025-08-05 12:00 | start no earlier than 2025-08-05 09:00 | Специалист для профилактики |

Changed:

| ID | Task | Start | Finish | Duration | Total float |
| --- | --- | --- | --- | --- | --- |
| 1 | **Проект РК** | 2025-04-07 → 2025-04-07 09:00 | 2025-07-18 → 2025-08-06 15:00 (+19d) | 68d → 78d |  |
| 12 | Начало реализации проекта | 2025-04-07 → 2025-04-07 09:00 | 2025-04-07 → 2025-04-07 09:00 |  |  |
| 13 | **Программирование** | 2025-04-08 → 2025-04-08 09:00 | 2025-05-28 → 2025-06-17 10:00 (+20d) | 32d → 42d |  |
| 14 | Постановка задачи | 2025-04-08 → 2025-04-08 09:00 | 2025-04-14 → 2025-04-14 18:00 |  |  |
| 15 | Разработка интерфейса | 2025-04-15 → 2025-04-15 12:00 | 2025-04-28 → 2025-04-29 16:00 (+1d) |  | 2d → 7d |
| 16 | Разработка модулей обработки данных | 2025-04-29 → 2025-04-29 16:00 | 2025-05-26 → 2025-06-03 15:00 (+8d) | 15d → 20d | 2d → 7d |
| 17 | Разработка базы данных | 2025-04-15 → 2025-04-15 12:00 | 2025-05-12 → 2025-05-27 15:00 (+15d) | 15d → 25d |  |
| 18 | Заполнение базы данных | 2025-05-12 → 2025-05-27 15:00 (+15d) | 2025-05-28 → 2025-06-17 10:00 (+20d) |  |  |
| 19 | Программирование завершено | 2025-05-28 → 2025-06-17 10:00 (+20d) | 2025-05-28 → 2025-06-17 10:00 (+20d) |  |  |
| 20 | **Тестирование и отладка** | 2025-05-21 → 2025-06-05 15:00 (+15d) | 2025-06-20 → 2025-07-08 17:00 (+18d) |  |  |
| 21 | Подготовка тестовых наборов данных | 2025-05-21 → 2025-06-05 15:00 (+15d) | 2025-05-28 → 2025-06-17 10:00 (+20d) |  |  |
| 22 | Тестирование и исправление ошибок | 2025-05-28 → 2025-06-17 10:00 (+20d) | 2025-06-20 → 2025-07-08 17:00 (+18d) |  |  |
| 23 | Отладка завершена | 2025-06-20 → 2025-07-08 17:00 (+18d) | 2025-06-20 → 2025-07-08 17:00 (+18d) |  |  |
| 24 | **Разработка документации** | 2025-06-11 → 2025-07-01 14:00 (+20d) | 2025-07-18 → 2025-08-06 15:00 (+19d) |  |  |
| 25 | Составление программной документации | 2025-06-11 → 2025-07-01 14:00 (+20d) | 2025-06-27 → 2025-07-15 17:00 (+18d) |  |  |
| 26 | Составление пользовательской документации | 2025-06-27 → 2025-07-15 17:00 (+18d) | 2025-07-18 → 2025-08-06 15:00 (+19d) |  |  |
| 27 | Конец проекта | 2025-07-18 → 2025-08-06 15:00 (+19d) | 2025-07-18 → 2025-08-06 15:00 (+19d) |  |  |

## Version 8 (data date 2025-06-09, saved 2025-04-07, file rk_10.mpp)

Note of the change: Добавлен курс ЭПИ

Last finish 2025-08-06 → 2025-08-04 (-2d). Complete tasks 0 → 9.

Removed: 11 Профилактика оборудования 9

Changed:

| ID | Task | Start | Finish | Duration | Complete | Total float | Other |
| --- | --- | --- | --- | --- | --- | --- | --- |
| 1 | **Проект РК** | 2025-04-07 09:00 A | 2025-08-06 15:00 → 2025-08-04 09:34 (-2d) | 78d → 75.82d | 0% → 60% |  | baseline start none → 2025-04-07 09:00; baseline finish none → 2025-07-29 17:08 |
| 2 | **Профилактика оборудования** | 2025-04-15 09:00 A | 2025-08-05 12:00 → 2025-07-22 12:00 (-14d) | 74.12d → 64.12d | 0% → 50% | 1.25d → 8.7d | baseline start none → 2025-04-15 09:00; baseline finish none → 2025-07-22 12:00 |
| 3 | Профилактика оборудования 1 | 2025-04-15 09:00 A | 2025-04-15 12:00 A |  | 0% → 100% | 75d → none | baseline start none → 2025-04-15 09:00; baseline finish none → 2025-04-15 12:00 |
| 4 | Профилактика оборудования 2 | 2025-04-29 09:00 A | 2025-04-29 12:00 A |  | 0% → 100% | 65d → none | baseline start none → 2025-04-29 09:00; baseline finish none → 2025-04-29 12:00 |
| 5 | Профилактика оборудования 3 | 2025-05-13 09:00 A | 2025-05-13 12:00 A |  | 0% → 100% | 59.12d → none | baseline start none → 2025-05-13 09:00; baseline finish none → 2025-05-13 12:00 |
| 6 | Профилактика оборудования 4 | 2025-05-27 09:00 A | 2025-05-27 12:00 A |  | 0% → 100% | 49.12d → none | baseline start none → 2025-05-27 09:00; baseline finish none → 2025-05-27 12:00 |
| 7 | Профилактика оборудования 5 |  |  |  |  | 39.12d → 33.39d | baseline start none → 2025-06-10 09:00; baseline finish none → 2025-06-10 12:00 |
| 8 | Профилактика оборудования 6 |  |  |  |  | 31.25d → 25.52d | baseline start none → 2025-06-24 09:00; baseline finish none → 2025-06-24 12:00 |
| 9 | Профилактика оборудования 7 |  |  |  |  | 21.25d → 15.52d | baseline start none → 2025-07-08 09:00; baseline finish none → 2025-07-08 12:00 |
| 10 | Профилактика оборудования 8 |  |  |  |  | 11.25d → 5.52d | baseline start none → 2025-07-22 09:00; baseline finish none → 2025-07-22 12:00 |
| 11 | Начало реализации проекта | 2025-04-07 09:00 A | 2025-04-07 09:00 A |  | 0% → 100% | 0d → none | baseline start none → 2025-04-07 09:00; baseline finish none → 2025-04-07 09:00 |
| 12 | **Программирование** | 2025-04-08 09:00 A | 2025-06-17 10:00 → 2025-06-10 16:34 (-7d) | 42d → 39.82d | 0% → 99% |  | baseline start none → 2025-04-08 09:00; baseline finish none → 2025-06-05 11:08 |
| 13 | Постановка задачи | 2025-04-08 09:00 A | 2025-04-14 18:00 → 2025-04-17 12:00 A (+3d) | 5d → 7d | 0% → 100% | 0d → none | baseline start none → 2025-04-08 09:00; baseline finish none → 2025-04-14 18:00 |
| 14 | Разработка интерфейса | 2025-04-15 12:00 → 2025-04-17 12:00 A (+2d) | 2025-04-29 16:00 → 2025-05-05 17:00 A (+6d) |  | 0% → 100% | 7d → none | baseline start none → 2025-04-15 12:00; baseline finish none → 2025-04-29 16:00 |
| 15 | Разработка модулей обработки данных | 2025-04-29 16:00 → 2025-05-19 09:00 A (+20d) | 2025-06-03 15:00 → 2025-06-10 16:34 (+7d) | 20d → 16.07d | 0% → 97% | 7d → 0d | baseline start none → 2025-05-12 17:00; baseline finish none → 2025-06-04 15:34 |
| 16 | Разработка базы данных | 2025-04-15 12:00 → 2025-04-17 12:00 A (+2d) | 2025-05-27 15:00 → 2025-05-21 17:08 A (-6d) | 25d → 19.64d | 0% → 100% | 0d → none | resources Аналитик; Программист 1; Программист 2 → Аналитик; Программист 1; Программист 2; Программист 3; baseline start none → 2025-04-15 12:00; baseline finish none → 2025-05-19 17:08 |
| 17 | Заполнение базы данных | 2025-05-27 15:00 → 2025-05-21 17:08 A (-6d) | 2025-06-17 10:00 → 2025-06-09 11:08 A (-8d) |  | 0% → 100% | 0d → none | baseline start none → 2025-05-19 17:08; baseline finish none → 2025-06-05 11:08 |
| 18 | Программирование завершено | 2025-06-17 10:00 → 2025-06-10 16:34 (-7d) | 2025-06-17 10:00 → 2025-06-10 16:34 (-7d) |  |  |  | baseline start none → 2025-06-05 11:08; baseline finish none → 2025-06-05 11:08 |
| 19 | **Тестирование и отладка** | 2025-06-05 15:00 → 2025-06-03 12:34 A (-2d) | 2025-07-08 17:00 → 2025-07-11 15:34 (+3d) | 20d → 25d | 0% → 18% | 20d → 15d | baseline start none → 2025-05-29 11:08; baseline finish none → 2025-07-07 14:34 |
| 20 | Подготовка тестовых наборов данных | 2025-06-05 15:00 → 2025-06-03 12:34 A (-2d) | 2025-06-17 10:00 → 2025-06-19 17:34 (+2d) | 5d → 10d | 0% → 46% | 20d → 15d | baseline start none → 2025-05-29 11:08; baseline finish none → 2025-06-16 10:34 |
| 21 | Тестирование и исправление ошибок | 2025-06-17 10:00 → 2025-06-19 17:34 (+2d) | 2025-07-08 17:00 → 2025-07-11 15:34 (+3d) |  |  | 20d → 15d | baseline start none → 2025-06-16 10:34; baseline finish none → 2025-07-07 14:34 |
| 22 | Отладка завершена | 2025-07-08 17:00 → 2025-07-11 15:34 (+3d) | 2025-07-08 17:00 → 2025-07-11 15:34 (+3d) |  |  | 20d → 15d | baseline start none → 2025-07-07 14:34; baseline finish none → 2025-07-07 14:34 |
| 23 | **Разработка документации** | 2025-07-01 14:00 → 2025-06-27 11:34 (-4d) | 2025-08-06 15:00 → 2025-08-04 09:34 (-2d) |  |  |  | baseline start none → 2025-06-23 16:08; baseline finish none → 2025-07-29 17:08 |
| 24 | Составление программной документации | 2025-07-01 14:00 → 2025-06-27 11:34 (-4d) | 2025-07-15 17:00 → 2025-07-11 15:34 (-4d) |  |  |  | baseline start none → 2025-06-23 16:08; baseline finish none → 2025-07-08 14:08 |
| 25 | Составление пользовательской документации | 2025-07-15 17:00 → 2025-07-11 15:34 (-4d) | 2025-08-06 15:00 → 2025-08-04 09:34 (-2d) |  |  |  | baseline start none → 2025-07-08 14:08; baseline finish none → 2025-07-29 17:08 |
| 26 | Конец проекта | 2025-08-06 15:00 → 2025-08-04 09:34 (-2d) | 2025-08-06 15:00 → 2025-08-04 09:34 (-2d) |  |  |  | baseline start none → 2025-07-29 17:08; baseline finish none → 2025-07-29 17:08 |
